# TagCompare

Schedule from MS Project, 2012-08-21 to 2012-12-13, 6 hours a day, A marks actual dates.

## Calendars

- Standard: Mon-Fri 08:00-14:00; Sat-Sun off.

## Resources

| Resource |
| --- |
| Daniel |
| Elwin |
| Sadwhi |
| Yogesh |

## Schedule

| ID | WBS | Task | Type | Duration | Start | Finish | Predecessors | Complete | Remaining | Baseline 1 start | Baseline 1 finish | Total slack | Free slack | Resources | Work | Actual work |
| --- | --- | --- | --- | --- | --- | --- | --- | --- | --- | --- | --- | --- | --- | --- | --- | --- |
| 1 | 1 | **Capstone** |  | 82.5d? | 2012-08-21 A | 2012-12-13 |  | 9% | 74.7d? | 2012-08-21 | 2012-12-13 | 0d |  |  | 1257h | 164.4h |
| 2 | 1.1 | **Setup and definitions** |  | 17d? | 2012-08-21 A | 2012-09-13 |  | 42% | 9.88d? | 2012-08-21 | 2012-09-13 | 65.5d |  |  | 195h | 121.8h |
| 3 | 1.1.1 | **Conceptualization** |  | 16d? | 2012-08-21 A | 2012-09-12 |  | 31% | 11d? | 2012-08-21 | 2012-09-12 | 65.5d | 0d |  | 66h | 30h |
| 4 | 1.1.1.1 | Base requirements/definitions |  | 18h? | 2012-08-21 A | 2012-08-24 |  | 80% | 3.6h? | 2012-08-21 | 2012-08-24 | 78.5d |  | Daniel | 18h | 14.4h |
| 5 | 1.1.1.2 | State-of-the-art analysis |  | 12h? | 2012-08-21 A | 2012-08-23 |  | 80% | 2.4h? | 2012-08-21 | 2012-08-23 | 79.5d |  | Yogesh | 12h | 9.6h |
| 6 | 1.1.1.3 | UI Prototypes |  | 60h? | 2012-08-21 | 2012-09-12 |  |  |  | 2012-08-21 | 2012-09-12 | 65.5d |  | Elwin [50%] | 30h |  |
| 7 | 1.1.1.4 | Version control structure |  | 6h? | 2012-08-24 A | 2012-08-27 A |  | 100% |  | 2012-08-24 | 2012-08-27 |  |  | Daniel | 6h | 6h |
| 8 | 1.1.2 | **Setup** |  | 9.5d? | 2012-08-23 A | 2012-09-05 |  | 64% | 3.4d? | 2012-08-23 | 2012-09-05 | 70d | 4.5d |  | 129h | 91.8h |
| 9 | 1.1.2.1 | Platform/tools install |  | 18h? | 2012-08-27 A | 2012-08-30 A |  | 100% |  | 2012-08-27 | 2012-08-30 |  |  | Daniel; Yogesh; Sadwhi | 54h | 54h |
| 10 | 1.1.2.2 | Version control hosting |  | 3h? | 2012-08-30 A | 2012-08-30 A |  | 100% |  | 2012-08-30 | 2012-08-30 |  |  | Daniel | 3h | 3h |
| 11 | 1.1.2.3 | Project definition/plan |  | 12h? | 2012-08-30 A | 2012-09-03 A |  | 100% |  | 2012-08-30 | 2012-09-03 |  |  | Sadwhi; Daniel | 24h | 24h |
| 12 | 1.1.2.4 | Induction to web development |  | 12h? | 2012-09-03 A | 2012-09-05 |  | 30% | 8.4h? | 2012-09-03 | 2012-09-05 | 70d |  | Daniel; Sadwhi; Yogesh | 36h | 10.8h |
| 13 | 1.1.2.5 | Configure Hosting |  | 12h? | 2012-08-23 | 2012-08-27 |  |  |  | 2012-08-23 | 2012-08-27 | 77.5d |  | Yogesh | 12h |  |
| 14 | 1.1.3 | Delivery Milestone | milestone | 6h? | 2012-09-12 | 2012-09-13 | 3, 8 |  |  | 2012-09-12 | 2012-09-13 | 65.5d |  |  |  |  |
| 15 | 1.2 | **Basic Site Prototype** |  | 33.5d? | 2012-08-30 A | 2012-10-16 | 9 | 10% | 30d? | 2012-08-30 | 2012-10-16 | 42d |  |  | 348h | 42.6h |
| 16 | 1.2.1 | **Basic site features** |  | 16.5d? | 2012-09-05 A | 2012-09-28 |  | 6% | 15.59d? | 2012-09-05 | 2012-09-28 | 47.5d | 5.5d |  | 84h | 6.6h |
| 17 | 1.2.1.1 | Look and feel |  | 72h? | 2012-09-12 | 2012-09-28 |  |  |  | 2012-09-12 | 2012-09-28 | 47.5d |  | Elwin [50%] | 36h |  |
| 18 | 1.2.1.2 | Session handling |  | 18h? | 2012-09-05 | 2012-09-10 |  |  |  | 2012-09-05 | 2012-09-10 | 61d |  | Daniel | 18h |  |
| 19 | 1.2.1.3 | Basic login/logout |  | 12h? | 2012-09-10 A | 2012-09-12 |  | 40% | 7.2h? | 2012-09-10 | 2012-09-12 | 59d |  | Daniel | 12h | 4.8h |
| 20 | 1.2.1.4 | Password recovery |  | 18h? | 2012-09-05 A | 2012-09-10 |  | 10% | 16.2h? | 2012-09-05 | 2012-09-10 | 61d |  | Sadwhi | 18h | 1.8h |
| 21 | 1.2.2 | **Data exctraction** |  | 20d? | 2012-09-05 A | 2012-10-03 |  | 30% | 14d? | 2012-09-05 | 2012-10-03 | 44d | 2d |  | 120h | 36h |
| 22 | 1.2.2.1 | Parse simple negative and positive tags from reviews |  | 120h? | 2012-09-05 A | 2012-10-03 |  | 30% | 84h? | 2012-09-05 | 2012-10-03 | 44d |  | Yogesh | 120h | 36h |
| 23 | 1.2.3 | **Product selection** |  | 26.5d? | 2012-08-30 | 2012-10-05 |  |  |  | 2012-08-30 | 2012-10-05 | 42d | 0d |  | 24h |  |
| 24 | 1.2.3.1 | manual product input |  | 12h? | 2012-08-30 | 2012-09-03 |  |  |  | 2012-08-30 | 2012-09-03 | 66.5d |  | Yogesh | 12h |  |
| 25 | 1.2.3.2 | product search |  | 12h? | 2012-10-03 | 2012-10-05 |  |  |  | 2012-10-03 | 2012-10-05 | 42d |  | Yogesh | 12h |  |

| ID | WBS | Task | Type | Duration | Start | Finish | Predecessors | Baseline 1 start | Baseline 1 finish | Total slack | Free slack | Constraint | Resources | Work |
| --- | --- | --- | --- | --- | --- | --- | --- | --- | --- | --- | --- | --- | --- | --- |
| 26 | 1.2.4 | **Product comparison** |  | 11d? | 2012-09-10 | 2012-09-25 |  | 2012-09-10 | 2012-09-25 | 50d | 8d |  |  | 96h |
| 27 | 1.2.4.1 | Base structure |  | 5d? | 2012-09-10 | 2012-09-17 |  | 2012-09-10 | 2012-09-17 | 56d |  | start no earlier than 2012-09-10 | Sadwhi | 30h |
| 28 | 1.2.4.2 | **Tag cloud** |  | 9d? | 2012-09-12 | 2012-09-25 |  | 2012-09-12 | 2012-09-25 | 50d |  |  |  | 54h |
| 29 | 1.2.4.2.1 | tag cloud implementacion |  | 30h? | 2012-09-12 | 2012-09-19 |  | 2012-09-12 | 2012-09-19 | 54d |  |  | Daniel | 30h |
| 30 | 1.2.4.2.2 | tag cloud dynamic filtering (all/some colors) |  | 12h? | 2012-09-19 | 2012-09-21 |  | 2012-09-19 | 2012-09-21 | 52d |  |  | Daniel | 12h |
| 31 | 1.2.4.2.3 | Custom key-only tag insertion |  | 12h? | 2012-09-21 | 2012-09-25 |  | 2012-09-21 | 2012-09-25 | 50d |  |  | Daniel | 12h |
| 32 | 1.2.4.3 | **Other** |  | 2d? | 2012-09-17 | 2012-09-19 |  | 2012-09-17 | 2012-09-19 | 54d |  |  |  | 12h |
| 33 | 1.2.4.3.1 | amazon link/shopping cart |  | 6h? | 2012-09-17 | 2012-09-18 |  | 2012-09-17 | 2012-09-18 | 55d |  |  | Sadwhi | 6h |
| 34 | 1.2.4.3.2 | voting/options popup |  | 6h? | 2012-09-18 | 2012-09-19 |  | 2012-09-18 | 2012-09-19 | 54d |  |  | Sadwhi | 6h |
| 35 | 1.2.5 | **Database** |  | 1d? | 2012-09-19 | 2012-09-20 |  | 2012-09-19 | 2012-09-20 | 53d | 11d |  |  | 6h |
| 36 | 1.2.5.1 | tag and relevance information |  | 3h? | 2012-09-19 | 2012-09-20 |  | 2012-09-19 | 2012-09-20 | 53.5d |  |  | Sadwhi | 3h |
| 37 | 1.2.5.2 | product-tag relationships |  | 3h? | 2012-09-20 | 2012-09-20 |  | 2012-09-20 | 2012-09-20 | 53d |  |  | Sadwhi | 3h |
| 38 | 1.2.6 | QA |  | 36h? | 2012-10-05 | 2012-10-15 | 16, 21, 23, 26, 35 | 2012-10-05 | 2012-10-15 | 42d | 0d |  | Elwin [50%] | 18h |
| 39 | 1.2.7 | Delivery Milestone | milestone | 6h? | 2012-10-15 | 2012-10-16 | 38 | 2012-10-15 | 2012-10-16 | 42d |  |  |  |  |
| 40 | 1.3 | **Advanced Interaction** |  | 30d? | 2012-09-20 | 2012-11-01 |  | 2012-09-20 | 2012-11-01 | 30d |  |  |  | 234h |
| 41 | 1.3.1 | trash/save for later drag & drop |  | 36h? | 2012-09-25 | 2012-10-03 |  | 2012-09-25 | 2012-10-03 | 42d | 12d |  | Daniel | 36h |
| 42 | 1.3.2 | **Data exctraction** |  | 10d? | 2012-10-05 | 2012-10-19 |  | 2012-10-05 | 2012-10-19 | 30d | 0d |  |  | 60h |
| 43 | 1.3.2.1 | Parse simple specs from Amazon |  | 60h? | 2012-10-05 | 2012-10-19 |  | 2012-10-05 | 2012-10-19 | 30d |  |  | Yogesh | 60h |
| 44 | 1.3.3 | **Product comparison** |  | 21d? | 2012-09-20 | 2012-10-19 |  | 2012-09-20 | 2012-10-19 | 30d | 0d |  |  | 114h |
| 45 | 1.3.3.1 | Comparison storage |  | 30h? | 2012-09-20 | 2012-09-27 |  | 2012-09-20 | 2012-09-27 | 46d |  |  | Sadwhi | 30h |
| 46 | 1.3.3.2 | tag selection popup |  | 12h? | 2012-09-27 | 2012-10-01 |  | 2012-09-27 | 2012-10-01 | 44d |  |  | Sadwhi | 12h |
| 47 | 1.3.3.3 | **Key-only compare UI** |  | 5d? | 2012-10-03 | 2012-10-10 |  | 2012-10-03 | 2012-10-10 | 37d | 7d |  |  | 30h |
| 48 | 1.3.3.3.1 | key-only tag comparison |  | 6h? | 2012-10-03 | 2012-10-04 |  | 2012-10-03 | 2012-10-04 | 41d |  |  | Daniel | 6h |
| 49 | 1.3.3.3.2 | key-only tag editing |  | 12h? | 2012-10-04 | 2012-10-08 |  | 2012-10-04 | 2012-10-08 | 39d |  |  | Daniel | 12h |
| 50 | 1.3.3.3.3 | key-only intelligent sorting |  | 12h? | 2012-10-08 | 2012-10-10 |  | 2012-10-08 | 2012-10-10 | 37d |  |  | Daniel | 12h |

| ID | WBS | Task | Type | Duration | Start | Finish | Predecessors | Baseline 1 start | Baseline 1 finish | Total slack | Free slack | Resources | Work |
| --- | --- | --- | --- | --- | --- | --- | --- | --- | --- | --- | --- | --- | --- |
| 51 | 1.3.3.4 | **Key-value compare UI** |  | 3d? | 2012-10-10 | 2012-10-15 |  | 2012-10-10 | 2012-10-15 | 34d | 4d |  | 18h |
| 52 | 1.3.3.4.1 | key-value specs editing |  | 12h? | 2012-10-10 | 2012-10-12 |  | 2012-10-10 | 2012-10-12 | 35d |  | Daniel | 12h |
| 53 | 1.3.3.4.2 | custom key-value spec insertion |  | 6h? | 2012-10-12 | 2012-10-15 |  | 2012-10-12 | 2012-10-15 | 34d |  | Daniel | 6h |
| 54 | 1.3.3.5 | **Database** |  | 4d? | 2012-10-15 | 2012-10-19 |  | 2012-10-15 | 2012-10-19 | 30d | 0d |  | 24h |
| 55 | 1.3.3.5.1 | key-only specs |  | 12h? | 2012-10-15 | 2012-10-17 |  | 2012-10-15 | 2012-10-17 | 32d |  | Daniel | 12h |
| 56 | 1.3.3.5.2 | key-value specs |  | 12h? | 2012-10-17 | 2012-10-19 |  | 2012-10-17 | 2012-10-19 | 30d |  | Daniel | 12h |
| 57 | 1.3.4 | QA |  | 48h? | 2012-10-19 | 2012-10-31 | 41, 42, 44, 47, 51, 54 | 2012-10-19 | 2012-10-31 | 30d | 0d | Elwin [50%] | 24h |
| 58 | 1.3.5 | Delivery Milestone |  | 6h? | 2012-10-31 | 2012-11-01 | 57 | 2012-10-31 | 2012-11-01 | 30d |  |  |  |
| 59 | 1.4 | **Improved Data Extraction** |  | 31d? | 2012-10-19 | 2012-12-03 |  | 2012-10-19 | 2012-12-03 | 8d |  |  | 390h |
| 60 | 1.4.1 | Research potential extraction methods |  | 30h? | 2012-10-19 | 2012-10-26 |  | 2012-10-19 | 2012-10-26 | 23d | 15d | Yogesh; Daniel; Sadwhi | 90h |
| 61 | 1.4.2 | Architectural Design |  | 30h? | 2012-10-26 | 2012-11-02 |  | 2012-10-26 | 2012-11-02 | 18d | 10d | Daniel; Yogesh; Sadwhi | 90h |
| 62 | 1.4.3 | Improved specs |  | 30h? | 2012-11-02 | 2012-11-09 |  | 2012-11-02 | 2012-11-09 | 13d | 5d | Sadwhi; Daniel; Yogesh | 90h |
| 63 | 1.4.4 | Improved opinion tags |  | 30h? | 2012-11-09 | 2012-11-16 |  | 2012-11-09 | 2012-11-16 | 8d | 0d | Sadwhi; Daniel; Yogesh | 90h |
| 64 | 1.4.5 | QA |  | 60h? | 2012-11-16 | 2012-11-30 | 60, 61, 62, 63 | 2012-11-16 | 2012-11-30 | 8d | 0d | Elwin [50%] | 30h |
| 65 | 1.4.6 | Delivery Milestone | milestone | 6h? | 2012-11-30 | 2012-12-03 | 64 | 2012-11-30 | 2012-12-03 | 8d |  |  |  |
| 66 | 1.5 | **Additional user features** |  | 53d? | 2012-10-01 | 2012-12-13 |  | 2012-10-01 | 2012-12-13 | 0d |  |  | 90h |
| 67 | 1.5.1 | **Gamification** |  | 15d? | 2012-10-31 | 2012-11-21 |  | 2012-10-31 | 2012-11-21 | 0d |  |  | 36h |
| 68 | 1.5.1.1 | Visual design and icons |  | 6d? | 2012-10-31 | 2012-11-08 |  | 2012-10-31 | 2012-11-08 | 9d |  | Elwin [50%] | 18h |
| 69 | 1.5.1.2 | Leaderboard |  | 6h? | 2012-11-16 | 2012-11-19 |  | 2012-11-16 | 2012-11-19 | 2d |  | Daniel | 6h |
| 70 | 1.5.1.3 | User Achievements |  | 6h? | 2012-11-19 | 2012-11-20 |  | 2012-11-19 | 2012-11-20 | 1d |  | Daniel | 6h |
| 71 | 1.5.1.4 | Weigthed user voting (trusted sources) |  | 6h? | 2012-11-20 | 2012-11-21 |  | 2012-11-20 | 2012-11-21 | 0d |  | Daniel | 6h |
| 72 | 1.5.2 | **Product selection** |  | 36d? | 2012-10-01 | 2012-11-20 |  | 2012-10-01 | 2012-11-20 | 1d |  |  | 30h |
| 73 | 1.5.2.1 | tag-based selection filtering |  | 18h? | 2012-10-01 | 2012-10-04 |  | 2012-10-01 | 2012-10-04 | 34d |  | Sadwhi | 18h |
| 74 | 1.5.2.2 | product suggestions |  | 12h? | 2012-11-16 | 2012-11-20 |  | 2012-11-16 | 2012-11-20 | 1d |  | Yogesh | 12h |
| 75 | 1.5.3 | QA |  | 48h? | 2012-11-30 | 2012-12-12 | 67, 72 | 2012-11-30 | 2012-12-12 | 0d |  | Elwin [50%] | 24h |
| 76 | 1.5.4 | Delivery Milestone | milestone | 6h? | 2012-12-12 | 2012-12-13 | 75 | 2012-12-12 | 2012-12-13 | 0d |  |  |  |

| ID | WBS | Task | Duration | Start | Finish | Baseline 1 start | Baseline 1 finish | Total slack |
| --- | --- | --- | --- | --- | --- | --- | --- | --- |
| 77 | 2 | **Optional/Pending Features** | 1d? | 2012-08-21 | 2012-08-22 | 2012-08-21 | 2012-08-22 | 81.5d |
| 78 | 2.1 | Tag organization/hierarchy management | 6h? | 2012-08-21 | 2012-08-22 | 2012-08-21 | 2012-08-22 | 81.5d |
| 79 | 2.2 | Plot changes to tag cloud over time | 6h? | 2012-08-21 | 2012-08-22 | 2012-08-21 | 2012-08-22 | 81.5d |
| 80 | 2.3 | Automatic tag advertising | 6h? | 2012-08-21 | 2012-08-22 | 2012-08-21 | 2012-08-22 | 81.5d |
| 81 | 2.4 | link tags to their original review | 1d? | 2012-08-21 | 2012-08-22 | 2012-08-21 | 2012-08-22 | 81.5d |
